# FlyDreamAir

Schedule from ProjectLibre, 2026-03-16 to 2026-05-27.

## Calendars

- Standard: Mon-Fri 08:00-12:00, 13:00-17:00; Sat-Sun off.

## Resources

| Resource | Group | Rate |
| --- | --- | --- |
| Unassigned |  |  |
| Human Resources |  |  |
| Harrington |  | 85 |
| Anas |  | 75 |
| Denisha |  | 75 |
| Adam |  | 95 |
| Finley |  | 65 |
| Development |  |  |
| Development Environment | Development | 20000 |
| Mock Flight Schedule API | Development | 12000 |
| Security Audit | Development | 15000 |
| Compliance |  |  |
| Contingency Fund | Compliance | 10000 |
| Legal & Compliance | Compliance | 5000 |
| Hardware |  |  |
| Self-Service Kiosks | Hardware | 6000 |
| QR Code Scanners | Hardware | 800 |
| Subscriptions |  |  |
| Domain & SSL - Yearly | Subscriptions | 500 |
| Production Hosting | Subscriptions | 15000 |

## Schedule

| ID | WBS | Task | Type | Duration | Start | Finish | Predecessors | Baseline start | Baseline finish | Deadline | Resources |
| --- | --- | --- | --- | --- | --- | --- | --- | --- | --- | --- | --- |
| 1 | 1 | **FlyDreamAir: Lounge Management System** |  | 53d | 2026-03-16 | 2026-05-27 |  | 2026-03-16 | 2026-05-27 | 2026-05-27 |  |
| 2 | 1.1 | **1 Phase: Initiation** |  | 5d | 2026-03-16 | 2026-03-20 |  | 2026-03-16 | 2026-03-20 |  |  |
| 3 | 1.1.1 | 1.1 Formulate Initial Team Roles |  | 1d | 2026-03-16 | 2026-03-16 |  | 2026-03-16 | 2026-03-16 |  | Harrington [50%]; Anas; Denisha; Adam; Finley [50%] |
| 4 | 1.1.2 | 1.2 Identify Project Stakeholders |  | 1d | 2026-03-16 | 2026-03-16 |  | 2026-03-16 | 2026-03-16 |  | Harrington [50%]; Finley [50%] |
| 5 | 1.1.3 | 1.3 Develop Business Case & NPV |  | 1d | 2026-03-17 | 2026-03-17 | 4 | 2026-03-17 | 2026-03-17 |  | Harrington; Anas |
| 6 | 1.1.4 | 1.4 Draft & Authorise Project Charter |  | 3d | 2026-03-18 | 2026-03-20 | 5 | 2026-03-18 | 2026-03-20 |  | Harrington; Contingency Fund |
| 7 | 1.1.5 | 1.5 Milestone: Project Authorisation | milestone | 0d | 2026-03-20 | 2026-03-20 | 6 | 2026-03-20 | 2026-03-20 |  |  |
| 8 | 1.2 | **2 Phase: Planning** |  | 10d | 2026-03-23 | 2026-04-03 |  | 2026-03-23 | 2026-04-03 |  |  |
| 9 | 1.2.1 | 2.1 Project Scope |  | 5d | 2026-03-23 | 2026-03-27 | 7 | 2026-03-23 | 2026-03-27 |  | Anas |
| 10 | 1.2.2 | 2.2 WBS & Dictionary |  | 5d | 2026-03-30 | 2026-04-03 | 9 | 2026-03-30 | 2026-04-03 |  | Anas [50%] |
| 11 | 1.2.3 | 2.3 Risk Registry |  | 5d | 2026-03-30 | 2026-04-03 | 9 | 2026-03-30 | 2026-04-03 |  | Finley |
| 12 | 1.2.4 | 2.4 Cost & Effort Estimate |  | 5d | 2026-03-30 | 2026-04-03 | 9 | 2026-03-30 | 2026-04-03 |  | Harrington; Anas [50%] |
| 13 | 1.2.5 | 2.5 Milestone: Scope Approval | milestone | 0d | 2026-04-03 | 2026-04-03 | 12 | 2026-04-03 | 2026-04-03 |  |  |
| 14 | 1.3 | **3 Phase: Design** |  | 10d | 2026-04-06 | 2026-04-17 |  | 2026-04-06 | 2026-04-17 |  |  |
| 15 | 1.3.1 | 3.1 Database Schema Design |  | 5d | 2026-04-06 | 2026-04-10 | 13 | 2026-04-06 | 2026-04-10 |  | Adam [50%] |
| 16 | 1.3.2 | 3.2 UI/UX Wireframe & Style Guide |  | 10d | 2026-04-06 | 2026-04-17 | 13 | 2026-04-06 | 2026-04-17 |  | Denisha |
| 17 | 1.3.3 | 3.3 System Architecture Design |  | 5d | 2026-04-06 | 2026-04-10 | 13 | 2026-04-06 | 2026-04-10 |  | Adam [50%] |
| 18 | 1.3.4 | 3.4 Milestone: Design Approval | milestone | 0d | 2026-04-17 | 2026-04-17 | 15, 16, 17 | 2026-04-17 | 2026-04-17 |  |  |
| 19 | 1.4 | **4 Phase: Development** |  | 20d | 2026-04-20 | 2026-05-15 |  | 2026-04-20 | 2026-05-15 |  |  |
| 20 | 1.4.1 | **4.1 Sprint Setup: Infrastructure** |  | 2d | 2026-04-20 | 2026-04-21 |  | 2026-04-20 | 2026-04-21 |  |  |
| 21 | 1.4.1.1 | 4.1.1 Development Environment |  | 1d | 2026-04-20 | 2026-04-20 | 18 | 2026-04-20 | 2026-04-20 |  | Adam; Development Environment; Mock Flight Schedule API |
| 22 | 1.4.1.2 | 4.1.2 Database Seeding |  | 1d | 2026-04-21 | 2026-04-21 | 21 | 2026-04-21 | 2026-04-21 |  | Adam |
| 23 | 1.4.2 | **4.2 Sprint 1: Foundation** |  | 4d | 2026-04-22 | 2026-04-27 |  | 2026-04-22 | 2026-04-27 |  |  |
| 24 | 1.4.2.1 | 4.2.1 [FR-01] Identity & Access |  | 2d | 2026-04-22 | 2026-04-23 | 22 | 2026-04-22 | 2026-04-23 |  | Denisha; Adam |
| 25 | 1.4.2.2 | 4.2.2 [FR-8] Data Management |  | 2d | 2026-04-24 | 2026-04-27 | 24 | 2026-04-24 | 2026-04-27 |  | Adam |

| ID | WBS | Task | Type | Duration | Start | Finish | Predecessors | Baseline start | Baseline finish | Resources |
| --- | --- | --- | --- | --- | --- | --- | --- | --- | --- | --- |
| 26 | 1.4.3 | **4.3 Sprint 2: Core Logic** |  | 7d | 2026-04-28 | 2026-05-06 |  | 2026-04-28 | 2026-05-06 |  |
| 27 | 1.4.3.1 | 4.3.1 [FR-02] Tiered Eligibility |  | 2d | 2026-04-28 | 2026-04-29 | 25 | 2026-04-28 | 2026-04-29 | Adam; Anas |
| 28 | 1.4.3.2 | 4.3.2 [FR-03] Six-Month Gate |  | 2d | 2026-04-30 | 2026-05-01 | 27 | 2026-04-30 | 2026-05-01 | Adam |
| 29 | 1.4.3.3 | 4.3.3 [FR-05] Occupancy Logic |  | 3d | 2026-05-04 | 2026-05-06 | 28 | 2026-05-04 | 2026-05-06 | Adam |
| 30 | 1.4.4 | **4.4 Sprint 3: Transactional Functions** |  | 7d | 2026-05-07 | 2026-05-15 |  | 2026-05-07 | 2026-05-15 |  |
| 31 | 1.4.4.1 | 4.4.1 [FR-04] Booking Lifecycle |  | 3d | 2026-05-07 | 2026-05-11 | 29 | 2026-05-07 | 2026-05-11 | Adam; Denisha |
| 32 | 1.4.4.2 | 4.4.2 [FR-06] Payment Processing |  | 2d | 2026-05-12 | 2026-05-13 | 31 | 2026-05-12 | 2026-05-13 | Adam |
| 33 | 1.4.4.3 | 4.4.3 [FR-07] QR Verification/Generation |  | 2d | 2026-05-14 | 2026-05-15 | 32 | 2026-05-14 | 2026-05-15 | Denisha; Adam |
| 34 | 1.4.5 | 4.5 Milestone: Development Complete | milestone | 0d | 2026-05-15 | 2026-05-15 | 20, 23, 26, 30 | 2026-05-15 | 2026-05-15 |  |
| 35 | 1.5 | **5 Phase: Testing/Q&A** |  | 5d | 2026-05-18 | 2026-05-22 |  | 2026-05-18 | 2026-05-22 |  |
| 36 | 1.5.1 | 5.1 Functional Testing |  | 2d | 2026-05-18 | 2026-05-19 | 34 | 2026-05-18 | 2026-05-19 | Anas; Adam |
| 37 | 1.5.2 | 5.2 Performance & Accessibility Checks |  | 1d | 2026-05-20 | 2026-05-20 | 36 | 2026-05-20 | 2026-05-20 | Anas; Adam |
| 38 | 1.5.3 | 5.3 Pen Testing/ Bug Fixing |  | 2d | 2026-05-21 | 2026-05-22 | 37 | 2026-05-21 | 2026-05-22 | Adam; Finley; Security Audit |
| 39 | 1.5.4 | 5.4 Milestone: Testing Complete | milestone | 0d | 2026-05-22 | 2026-05-22 | 38 | 2026-05-22 | 2026-05-22 |  |
| 40 | 1.6 | **6 Phase: Closing** |  | 3d | 2026-05-25 | 2026-05-27 |  | 2026-05-25 | 2026-05-27 |  |
| 41 | 1.6.1 | 6.1 Project Deployment |  | 1d | 2026-05-25 | 2026-05-25 | 39 | 2026-05-25 | 2026-05-25 | Adam; Harrington; Finley; Production Hosting; Domain & SSL - Yearly; QR Code Scanners [400%]; Self-Service Kiosks [400%]; Legal & Compliance |
| 42 | 1.6.2 | 6.2 Staff Training |  | 1d | 2026-05-26 | 2026-05-26 | 41 | 2026-05-26 | 2026-05-26 | Anas; Denisha |
| 43 | 1.6.3 | 6.3 Final Report |  | 1d | 2026-05-27 | 2026-05-27 | 42 | 2026-05-27 | 2026-05-27 | Harrington; Anas; Denisha; Adam; Finley |
| 44 | 1.6.4 | 6.4 Milestone: Project Complete | milestone | 0d | 2026-05-27 | 2026-05-27 | 43 | 2026-05-27 | 2026-05-27 |  |
